# 项目管理

How a schedule from MS Project changed from version to version. A marks actual dates.

## Version 1 (saved 2020-11-30)

| ID | WBS | Task | Duration | Start | Finish | Predecessors | Total float |
| --- | --- | --- | --- | --- | --- | --- | --- |
| 1 | 1 | **启动** | 3d | 2020-11-09 | 2020-11-11 |  |  |
| 2 |  | 组建核心团队 | 1d | 2020-11-09 | 2020-11-09 |  |  |
| 3 |  | 干系人分析 | 1d | 2020-11-09 | 2020-11-09 |  |  |
| 4 |  | 里程碑计划 | 1d | 2020-11-09 | 2020-11-09 |  |  |
| 5 |  | 制定项目章程 | 1d | 2020-11-10 | 2020-11-10 | 2, 3, 4 |  |
| 6 |  | 项目启动大会 | 1d | 2020-11-11 | 2020-11-11 | 5 |  |
| 7 | 2 | **规划** | 18d | 2020-11-12 | 2020-12-07 |  | 0d |
| 8 | 2.1 | **规划范围** | 4d | 2020-11-12 | 2020-11-17 |  |  |
| 9 |  | 制定需求说明书 | 1d | 2020-11-12 | 2020-11-12 | 6 |  |
| 10 |  | 界面设计 | 1d | 2020-11-13 | 2020-11-13 | 9 |  |
| 11 |  | 详细设计说明书 | 1d | 2020-11-13 | 2020-11-13 | 9 |  |
| 12 |  | 项目范围说明书 | 1d | 2020-11-13 | 2020-11-13 | 9 |  |
| 13 |  | 创建WBS | 1d | 2020-11-16 | 2020-11-16 | 10, 11, 12 |  |
| 14 |  | 形成范围基准 | 1d | 2020-11-17 | 2020-11-17 | 13 |  |
| 15 | 2.2 | **规划时间** | 5d | 2020-11-18 | 2020-11-24 |  |  |
| 16 |  | 排列工作包顺序 | 1d | 2020-11-18 | 2020-11-18 | 14 |  |
| 17 |  | 估算资源 | 1d | 2020-11-19 | 2020-11-19 | 16 |  |
| 18 |  | 估算持续时间 | 1d | 2020-11-20 | 2020-11-20 | 17 |  |
| 19 |  | 制定进度计划 | 1d | 2020-11-23 | 2020-11-23 | 18 |  |
| 20 |  | 形成进度基准 | 1d | 2020-11-24 | 2020-11-24 | 19 |  |
| 21 | 2.3 | **规划成本** | 3d | 2020-11-25 | 2020-11-27 |  |  |
| 22 |  | 项目成本估算 | 1d | 2020-11-25 | 2020-11-25 | 20 |  |
| 23 |  | 项目预算 | 1d | 2020-11-26 | 2020-11-26 | 22 |  |
| 24 |  | 形成范围基准 | 1d | 2020-11-27 | 2020-11-27 | 23 |  |
| 25 | 2.4 | **规划质量** | 2d | 2020-11-30 | 2020-12-01 |  | 0d |
| 26 |  | 制定测试计划 | 1d | 2020-11-30 | 2020-11-30 | 24 |  |
| 27 |  | 制定测试用例 | 1d | 2020-12-01 | 2020-12-01 | 26 |  |
| 28 | 2.5 | **规划人力资源** | 2d | 2020-11-18 | 2020-11-19 |  |  |
| 29 |  | 制定人力资源计划 | 1d | 2020-11-18 | 2020-11-18 | 14 |  |
| 30 |  | 制定人员配备管理计划 | 1d | 2020-11-19 | 2020-11-19 | 29 |  |
| 31 | 2.6 | **规划沟通** | 1d | 2020-11-20 | 2020-11-20 |  |  |
| 32 |  | 制定沟通管理计划 | 1d | 2020-11-20 | 2020-11-20 | 30 |  |
| 33 | 2.7 | **规划采购** | 2d | 2020-11-18 | 2020-11-19 |  |  |
| 34 |  | 自制外购分析 | 1d | 2020-11-18 | 2020-11-18 | 14 |  |
| 35 |  | 制定采购文件 | 1d | 2020-11-19 | 2020-11-19 | 29 |  |
| 36 | 2.8 | **规划风险** | 3d | 2020-12-02 | 2020-12-04 |  | 0d |
| 37 |  | 识别风险 | 1d | 2020-12-02 | 2020-12-02 | 15, 21, 28, 25 |  |
| 38 |  | 风险分析 | 1d | 2020-12-03 | 2020-12-03 | 37 |  |
| 39 |  | 制定风险登记册 | 1d | 2020-12-04 | 2020-12-04 | 38 |  |
| 40 |  | 规划整合 | 1d | 2020-12-07 | 2020-12-07 | 39 |  |
| 41 | 3 | **执行与监控** | 9d | 2020-12-09 | 2020-12-21 |  |  |
| 42 |  | 组建团队项目 | 1d | 2020-12-08 | 2020-12-08 | 40 |  |
| 43 | 3.2 | **项目执行** | 7d | 2020-12-10 | 2020-12-18 |  |  |
| 44 | 3.2.1 | **用户模块** | 7d | 2020-12-10 | 2020-12-18 |  |  |
| 45 |  | 注册登录 | 1d | 2020-12-10 | 2020-12-10 | 42 |  |
| 46 |  | 音乐播放 | 1d | 2020-12-11 | 2020-12-11 | 42 |  |
| 47 |  | 题库信息 | 1d | 2020-12-12 | 2020-12-12 | 42 |  |
| 48 |  | 学校信息搜索 | 1d | 2020-12-13 | 2020-12-13 | 42 |  |
| 49 |  | 个人信息设置 | 1d | 2020-12-14 | 2020-12-14 | 42 |  |
| 50 |  | 首页 | 1d | 2020-12-11 | 2020-12-11 | 45 |  |
| 51 |  | 计划表 | 1d | 2020-12-16 | 2020-12-16 | 42 |  |
| 52 | 3.2.2 | **管理员模块** | 5d | 2020-12-10 | 2020-12-16 |  |  |
| 53 |  | 用户管理 | 1d | 2020-12-11 | 2020-12-11 | 45 |  |
| 54 |  | 音乐管理 | 1d | 2020-12-14 | 2020-12-14 | 46 |  |
| 55 |  | 题库更新维护 | 1d | 2020-12-14 | 2020-12-14 | 47 |  |
| 56 |  | 学校信息更新维护 | 1d | 2020-12-14 | 2020-12-14 | 48 |  |
| 57 |  | 个性装扮管理 | 1d | 2020-12-15 | 2020-12-15 | 49 |  |
| 58 |  | 备份 | 1d | 2020-12-16 | 2020-12-16 | 50 |  |
| 59 | 3.3 | **项目监控** | 3d | 2020-12-17 | 2020-12-19 |  |  |
| 60 |  | 各项指标监控 | 1d | 2020-12-10 | 2020-12-10 | 42 |  |
| 61 |  | 监控审评 | 1d | 2020-12-11 | 2020-12-11 | 60 |  |
| 62 |  | 变更审评 | 1d | 2020-12-14 | 2020-12-14 | 61 |  |
| 63 |  | 例会 | 1d | 2020-12-18 | 2020-12-18 | 42 |  |
| 64 | 3.4 | **管理干系人** | 1d | 2020-12-20 | 2020-12-20 |  |  |
| 65 |  | 发布项目信息 | 1d | 2020-12-10 | 2020-12-10 | 42 |  |
| 66 |  | 报告监控指标 | 1d | 2020-12-11 | 2020-12-11 | 42 |  |
| 67 |  | 干系人沟通 | 1d | 2020-12-14 | 2020-12-14 | 42 |  |
| 68 | 3.5 | **团建活动** | 1d? | 2020-12-17 | 2020-12-17 |  |  |
| 69 |  | 培训 | 1d | 2020-12-17 | 2020-12-17 | 42 |  |
| 70 |  | 娱乐活动 | 1d | 2020-12-17 | 2020-12-17 | 42 |  |

| ID | WBS | Task | Duration | Start | Finish | Predecessors |
| --- | --- | --- | --- | --- | --- | --- |
| 71 |  | 沟通 | 1d | 2020-12-17 | 2020-12-17 | 42 |
| 72 |  | 采购 | 1d | 2020-12-10 | 2020-12-10 | 42 |
| 73 |  | 项目验收 | 1d | 2020-12-21 | 2020-12-21 | 43 |
| 74 | 4 | **收尾** | 1d | 2020-12-22 | 2020-12-22 |  |
| 75 |  | 项目终验 | 1d | 2020-12-22 | 2020-12-22 | 73 |
| 76 |  | 结束采购 | 1d | 2020-12-22 | 2020-12-22 | 73 |
| 77 |  | 项目内部收尾 | 1d | 2020-12-22 | 2020-12-22 | 73 |

## Version 2 (saved 2020-12-01)

Last finish stays 2020-12-22.

Changed:

| ID | Task | Other |
| --- | --- | --- |
| 51 | 设置计划 | was named 计划表 |
| 53 | 用户信息管理 | was named 用户管理 |

## Version 3 (saved 2020-12-08)

Last finish stays 2020-12-22.

Added:

| ID | Task | Duration | Start | Finish |
| --- | --- | --- | --- | --- |
| 1 | **研小陪** | 32d | 2020-11-09 | 2020-12-22 |

Changed:

| ID | Task | Other |
| --- | --- | --- |
| 46 | 注册登录 | resources 刘雨宣 → 刘雨宣; 电脑 |
| 47 | 音乐播放 | resources 李佳宁 → 李佳宁; 电脑 |
| 48 | 题库信息 | resources 孟旭颖 → 孟旭颖; 电脑 |
| 49 | 学校信息搜索 | resources 田文秀 → 田文秀; 电脑 |
| 50 | 个人信息设置 | resources 刘雨宣; 谢婉琴 → 刘雨宣; 谢婉琴; 电脑 [200%] |
| 51 | 首页 | resources 刘雨宣 → 刘雨宣; 电脑 |
| 52 | 设置计划 | resources 张荣 → 张荣; 电脑 |
| 54 | 用户信息管理 | resources 谢婉琴 → 谢婉琴; 电脑 |
| 55 | 音乐管理 | resources 李佳宁 → 李佳宁; 电脑 |
| 56 | 题库更新维护 | resources 孟旭颖 → 孟旭颖; 电脑 |
| 57 | 学校信息更新维护 | resources 田文秀 → 田文秀; 电脑 |
| 58 | 个性装扮管理 | resources 刘雨宣 → 刘雨宣; 电脑 |
| 59 | 备份 | resources 谢婉琴 → 谢婉琴; 电脑 |

## Version 4 (saved 2020-12-09)

Last finish stays 2020-12-22.

Changed:

| ID | Task | Start | Finish | Duration | Predecessors | Other |
| --- | --- | --- | --- | --- | --- | --- |
| 5 | 里程碑计划 | 2020-11-09 → 2020-11-10 (+1d) | 2020-11-09 → 2020-11-10 (+1d) |  | none → 3, 4 |  |
| 6 | 制定项目章程 |  |  |  | 3, 4, 5 → 3, 4 | resources 田文秀; 孟旭颖; 谢婉琴; 张荣 → 田文秀; 孟旭颖; 张荣 |
| 18 | 估算资源 |  |  |  |  | resources 谢婉琴 → 李佳宁 |
| 19 | 估算持续时间 |  |  |  |  | resources 谢婉琴 → 刘雨宣 |
| 30 | 制定人力资源计划 |  |  |  |  | resources 谢婉琴 → 田文秀 |
| 31 | 制定人员配备管理计划 |  |  |  |  | resources 谢婉琴 → 张荣 |
| 35 | 自制外购分析 |  |  |  |  | resources 谢婉琴 → 孟旭颖 |
| 48 | 题库信息 | 2020-12-12 → 2020-12-15 (+3d) | 2020-12-12 → 2020-12-15 (+3d) |  |  |  |
| 49 | 学校信息搜索 | 2020-12-13 → 2020-12-11 (-2d) | 2020-12-13 → 2020-12-11 (-2d) |  |  |  |
| 56 | 题库更新维护 | 2020-12-14 → 2020-12-16 (+2d) | 2020-12-14 → 2020-12-16 (+2d) |  |  |  |
| 58 | 个性装扮管理 |  |  |  | 50 → 57 |  |
| 59 | 备份 |  |  |  | 51 → 58 |  |
| 61 | 各项指标监控 | 2020-12-10 → 2020-12-17 (+7d) | 2020-12-10 → 2020-12-17 (+7d) |  |  | resources 李佳宁; 谢婉琴 → 李佳宁 |
| 62 | 监控审评 | 2020-12-11 → 2020-12-17 (+6d) | 2020-12-11 → 2020-12-17 (+6d) |  | 61 → none | resources 孟旭颖; 谢婉琴; 张荣; 刘雨宣 → 刘雨宣 |
| 63 | 变更审评 | 2020-12-14 → 2020-12-18 (+4d) | 2020-12-14 → 2020-12-18 (+4d) |  |  | resources 孟旭颖; 谢婉琴; 张荣; 刘雨宣 → 张荣 |
| 64 | 例会 | 2020-12-18 → 2020-12-19 (+1d) | 2020-12-18 → 2020-12-19 (+1d) |  |  | resources 田文秀; 李佳宁; 孟旭颖; 谢婉琴; 张荣; 刘雨宣 → 田文秀; 李佳宁; 孟旭颖; 谢婉琴 [20%]; 张荣; 刘雨宣 |
| 66 | 发布项目信息 | 2020-12-10 → 2020-12-20 (+10d) | 2020-12-10 → 2020-12-20 (+10d) |  |  | resources 谢婉琴 → 谢婉琴 [50%]; 李佳宁 |
| 67 | 报告监控指标 | 2020-12-11 → 2020-12-20 (+9d) | 2020-12-11 → 2020-12-20 (+9d) |  |  | resources 谢婉琴 → 孟旭颖; 谢婉琴 [50%] |
| 68 | 干系人沟通 | 2020-12-14 → 2020-12-20 (+6d) | 2020-12-14 → 2020-12-20 (+6d) |  |  | resources 谢婉琴 → 田文秀; 谢婉琴 [50%] |
| 69 | **团建活动** |  |  | 1d? → 1d |  |  |
| 70 | 培训 |  |  |  | 43 → 59 | resources 田文秀; 李佳宁; 孟旭颖; 谢婉琴; 张荣; 刘雨宣 → 孟旭颖 |
| 71 | 娱乐活动 |  |  |  | 43 → 59 | resources 田文秀; 李佳宁; 孟旭颖; 谢婉琴; 张荣; 刘雨宣 → 田文秀; 张荣 |
| 72 | 沟通 |  |  |  | 43 → 59 | resources 田文秀; 李佳宁; 孟旭颖; 谢婉琴; 张荣; 刘雨宣 → 谢婉琴 |
| 73 | 采购 | 2020-12-10 → 2020-12-18 (+8d) | 2020-12-10 → 2020-12-18 (+8d) |  | 43 → 72 |  |
| 74 | 项目验收 |  |  |  | 44 → 73 |  |
| 76 | 项目终验 |  |  |  |  | resources 田文秀; 孟旭颖; 谢婉琴; 张荣; 刘雨宣 → 田文秀; 孟旭颖; 谢婉琴 [20%]; 张荣; 刘雨宣 |
| 78 | 项目内部收尾 |  |  |  |  | resources 田文秀; 李佳宁; 孟旭颖; 谢婉琴; 张荣; 刘雨宣 → 李佳宁 |
